Schedule from MS Project, 2024-03-01 to 2024-05-07, costs in ¥.

## Calendars

- 标准: Mon-Fri 08:00-12:00, 13:00-17:00; Sat-Sun off.

## Resources

| Resource | Rate |
| --- | --- |
| 项目经理 | 28 |
| 架构设计师 | 80 |
| 需求分析师 | 30 |
| 前端开发工程师1 | 35 |
| 前端开发工程师2 | 40 |
| 后端开发工程师1 | 40 |
| 后端开发工程师2 | 40 |
| 测试工程师1 | 30 |
| 测试工程师2 | 30 |
| 运维工程师 | 30 |

## Schedule

| ID | WBS | Task | Duration | Start | Finish | Predecessors | Total slack | Free slack | Constraint | Resources | Work | Cost |
| --- | --- | --- | --- | --- | --- | --- | --- | --- | --- | --- | --- | --- |
| 1 | 1 | **省级就业失业数据收集与管理平台开发** | 44d? | 2024-03-01 08:00 | 2024-05-01 17:00 |  |  |  |  |  | 1641.5h | 62,583 |
| 2 | 1.1 | **项目规划** | 3.5d? | 2024-03-01 08:00 | 2024-03-06 12:00 |  | 26.25d |  |  |  | 30h | 1,046 |
| 3 | 1.1.1 | 合同签订 | 0.25d? | 2024-03-01 08:00 | 2024-03-01 10:00 |  | 23.88d | 0d |  | 项目经理 | 2h | 56 |
| 4 | 1.1.2 | 计划编制 | 1d? | 2024-03-05 10:00 | 2024-03-06 10:00 | 17 | 23.88d | 0d |  | 项目经理 | 8h | 224 |
| 5 | 1.1.3 | 计划确认 | 0.25d? | 2024-03-06 10:00 | 2024-03-06 12:00 | 4 | 26.25d | 0d |  | 测试工程师1; 后端开发工程师1; 架构设计师; 前端开发工程师1; 需求分析师; 运维工程师; 测试工程师2; 后端开发工程师2; 前端开发工程师2; 项目经理 | 20h | 766 |
| 6 | 1.2 | **需求分析** | 36.25d? | 2024-03-01 10:00 | 2024-04-22 12:00 |  | 10.75d |  |  |  | 44h | 1,470 |
| 7 | 1.2.1 | 需求开发 | 1d? | 2024-03-01 10:00 | 2024-03-04 10:00 | 3 | 23.88d | 0d |  | 需求分析师 | 8h | 240 |
| 8 | 1.2.2 | 需求确认 | 0.25d? | 2024-03-04 10:00 | 2024-03-04 12:00 | 7 | 26.25d | 0d |  | 测试工程师1; 测试工程师2; 后端开发工程师1; 后端开发工程师2; 架构设计师; 前端开发工程师1; 前端开发工程师2; 需求分析师; 项目经理; 运维工程师 | 20h | 766 |
| 9 | 1.2.3 | **需求管理** | 21.5d? | 2024-03-22 08:00 | 2024-04-22 12:00 | 8 | 10.75d |  |  |  | 8h | 224 |
| 10 | 1.2.3.1 | 1 | 0.5d? | 2024-03-22 08:00 | 2024-03-22 12:00 |  | 29.38d |  | start no earlier than 2024-03-22 08:00 | 项目经理 | 4h | 112 |
| 11 | 1.2.3.2 | 2 | 0.5d? | 2024-04-22 08:00 | 2024-04-22 12:00 |  | 8.38d |  | start no earlier than 2024-04-22 08:00 | 项目经理 | 4h | 112 |
| 12 | 1.2.4 | 验收测试计划编制 | 0.5d? | 2024-03-04 13:00 | 2024-03-04 17:00 | 8 | 42.88d |  |  | 测试工程师1; 测试工程师2 | 8h | 240 |
| 13 | 1.3 | **开发环境准备** | 0.5d? | 2024-03-13 08:00 | 2024-03-13 12:00 |  | 26.25d |  |  |  | 20h | 940 |
| 14 | 1.3.1 | 硬件环境准备 | 0.25d? | 2024-03-13 08:00 | 2024-03-13 10:00 | 26 | 26.25d | 0d |  | 后端开发工程师1; 后端开发工程师2; 前端开发工程师1; 前端开发工程师2; 架构设计师 | 10h | 470 |
| 15 | 1.3.2 | 软件环境准备 | 0.25d? | 2024-03-13 10:00 | 2024-03-13 12:00 | 14 | 26.25d | 0d |  | 后端开发工程师1; 后端开发工程师2; 架构设计师; 前端开发工程师1; 前端开发工程师2 | 10h | 470 |
| 16 | 1.4 | **总体设计** | 4.5d? | 2024-03-04 13:00 | 2024-03-08 17:00 |  | 26.25d |  |  |  | 48h | 2,590 |
| 17 | 1.4.1 | 开发标准确定 | 0.25d? | 2024-03-05 08:00 | 2024-03-05 10:00 | 18 | 26.25d | 0d |  | 架构设计师; 项目经理; 后端开发工程师1; 后端开发工程师2; 前端开发工程师1; 前端开发工程师2 | 12h | 526 |
| 18 | 1.4.2 | 策略确定 | 0.5d? | 2024-03-04 13:00 | 2024-03-04 17:00 | 8 | 23.88d | 0d |  | 项目经理; 架构设计师 | 8h | 432 |
| 19 | 1.4.3 | 架构设计 | 2d? | 2024-03-06 13:00 | 2024-03-08 12:00 | 5 | 23.88d | 0d |  | 架构设计师; 项目经理 | 20h | 1,392 |
| 20 | 1.4.4 | 系统测试计划编制 | 0.5d? | 2024-03-08 13:00 | 2024-03-08 17:00 | 19 | 38.88d |  |  | 测试工程师2; 测试工程师1 | 8h | 240 |
| 21 | 1.5 | **详细设计** | 3.5d? | 2024-03-08 13:00 | 2024-03-13 17:00 |  | 26.25d |  |  |  | 44h | 2,252 |
| 22 | 1.5.1 | 系统分析 | 0.5d? | 2024-03-08 13:00 | 2024-03-08 17:00 | 19 | 23.88d | 0d |  | 架构设计师; 项目经理 | 8h | 432 |
| 23 | 1.5.2 | 功能模块分析 | 0.5d? | 2024-03-11 08:00 | 2024-03-11 12:00 | 22 | 23.88d | 0d |  | 架构设计师 | 4h | 320 |
| 24 | 1.5.3 | 接口设计 | 0.5d? | 2024-03-11 13:00 | 2024-03-11 17:00 | 23 | 23.88d | 0d |  | 架构设计师 | 4h | 320 |
| 25 | 1.5.4 | 数据库设计 | 0.5d? | 2024-03-12 08:00 | 2024-03-12 12:00 | 24 | 26.25d | 0d |  | 架构设计师; 后端开发工程师1; 后端开发工程师2 | 12h | 640 |
| 26 | 1.5.5 | 美工设计 | 0.5d? | 2024-03-12 13:00 | 2024-03-12 17:00 | 25 | 23.88d | 0d |  | 前端开发工程师1; 前端开发工程师2 | 8h | 300 |
| 27 | 1.5.6 | 集成测试计划编制 | 0.5d? | 2024-03-13 13:00 | 2024-03-13 17:00 | 15 | 23.88d | 0d |  | 测试工程师1; 测试工程师2 | 8h | 240 |

| ID | WBS | Task | Duration | Start | Finish | Predecessors | Total slack | Free slack | Resources | Work | Cost |
| --- | --- | --- | --- | --- | --- | --- | --- | --- | --- | --- | --- |
| 28 | 1.6 | **程序开发** | 27.25d? | 2024-03-14 08:00 | 2024-04-22 10:00 |  | 11d |  |  | 837.5h | 31,615 |
| 29 | 1.6.1 | **账号管理模块** | 4d? | 2024-03-14 08:00 | 2024-03-19 17:00 |  | 26.25d |  |  | 152h | 5,732 |
| 30 | 1.6.1.1 | 账号管理模块确认需求 | 0.5d? | 2024-03-14 08:00 | 2024-03-14 12:00 | 27 | 26.25d | 0d | 需求分析师; 后端开发工程师1; 后端开发工程师2; 前端开发工程师1; 前端开发工程师2; 项目经理; 架构设计师; 测试工程师1; 测试工程师2 | 36h | 1,412 |
| 31 | 1.6.1.2 | 账号管理模块文档设计 | 0.5d? | 2024-03-14 13:00 | 2024-03-14 17:00 | 30 | 26.25d | 0d | 后端开发工程师1; 后端开发工程师2; 前端开发工程师1; 前端开发工程师2; 运维工程师 | 20h | 740 |
| 32 | 1.6.1.3 | 账号管理模块代码设计 | 2d? | 2024-03-15 08:00 | 2024-03-18 17:00 | 31 | 26.25d | 0d | 后端开发工程师1; 后端开发工程师2; 前端开发工程师1; 前端开发工程师2 | 64h | 2,480 |
| 33 | 1.6.1.4 | 账号管理模块代码复核 | 0.5d? | 2024-03-19 08:00 | 2024-03-19 12:00 | 32 | 26.25d | 0d | 后端开发工程师1; 后端开发工程师2; 前端开发工程师1; 前端开发工程师2; 运维工程师 | 20h | 740 |
| 34 | 1.6.1.5 | 账号管理模块单元测试 | 0.5d? | 2024-03-19 13:00 | 2024-03-19 17:00 | 33 | 26.25d | 0d | 测试工程师1; 测试工程师2; 运维工程师 | 12h | 360 |
| 35 | 1.6.2 | **企业基础信息管理模块** | 4d? | 2024-03-20 08:00 | 2024-03-25 17:00 |  | 26.25d |  |  | 152h | 5,732 |
| 36 | 1.6.2.1 | 企业基础信息管理模块确认需求 | 0.5d? | 2024-03-20 08:00 | 2024-03-20 12:00 | 34 | 26.25d | 0d | 后端开发工程师1; 后端开发工程师2; 前端开发工程师1; 前端开发工程师2; 测试工程师1; 测试工程师2; 需求分析师; 架构设计师; 项目经理 | 36h | 1,412 |
| 37 | 1.6.2.2 | 企业基础信息管理模块文档设计 | 0.5d? | 2024-03-20 13:00 | 2024-03-20 17:00 | 36 | 26.25d | 0d | 后端开发工程师1; 后端开发工程师2; 前端开发工程师1; 前端开发工程师2; 运维工程师 | 20h | 740 |
| 38 | 1.6.2.3 | 企业基础信息管理模块代码设计 | 2d? | 2024-03-21 08:00 | 2024-03-22 17:00 | 37 | 26.25d | 0d | 后端开发工程师1; 后端开发工程师2; 前端开发工程师1; 前端开发工程师2 | 64h | 2,480 |
| 39 | 1.6.2.4 | 企业基础信息管理模块代码复核 | 0.5d? | 2024-03-25 08:00 | 2024-03-25 12:00 | 38 | 26.25d | 0d | 后端开发工程师1; 后端开发工程师2; 前端开发工程师1; 前端开发工程师2; 运维工程师 | 20h | 740 |
| 40 | 1.6.2.5 | 企业基础信息管理模块单元测试 | 0.5d? | 2024-03-25 13:00 | 2024-03-25 17:00 | 39 | 26.25d | 0d | 测试工程师1; 测试工程师2; 运维工程师 | 12h | 360 |
| 41 | 1.6.3 | **企业数据上报模块** | 4d? | 2024-03-26 08:00 | 2024-03-29 17:00 |  | 26.25d |  |  | 152h | 5,732 |
| 42 | 1.6.3.1 | 企业数据上报模块确认需求 | 0.5d? | 2024-03-26 08:00 | 2024-03-26 12:00 | 40 | 26.25d | 0d | 测试工程师1; 测试工程师2; 后端开发工程师1; 后端开发工程师2; 架构设计师; 前端开发工程师1; 前端开发工程师2; 项目经理; 需求分析师 | 36h | 1,412 |
| 43 | 1.6.3.2 | 企业数据上报模块文档设计 | 0.5d? | 2024-03-26 13:00 | 2024-03-26 17:00 | 42 | 26.25d | 0d | 后端开发工程师1; 后端开发工程师2; 前端开发工程师1; 前端开发工程师2; 运维工程师 | 20h | 740 |
| 44 | 1.6.3.3 | 企业数据上报模块代码设计 | 2d? | 2024-03-27 08:00 | 2024-03-28 17:00 | 43 | 26.25d | 0d | 后端开发工程师1; 后端开发工程师2; 前端开发工程师1; 前端开发工程师2 | 64h | 2,480 |
| 45 | 1.6.3.4 | 企业数据上报模块代码复核 | 0.5d? | 2024-03-29 08:00 | 2024-03-29 12:00 | 44 | 26.25d | 0d | 后端开发工程师1; 后端开发工程师2; 前端开发工程师1; 前端开发工程师2; 运维工程师 | 20h | 740 |
| 46 | 1.6.3.5 | 企业数据上报模块单元测试 | 0.5d? | 2024-03-29 13:00 | 2024-03-29 17:00 | 45 | 26.25d |  | 运维工程师; 测试工程师1; 测试工程师2 | 12h | 360 |
| 47 | 1.6.4 | **省管理部门基础信息管理模块** | 6.38d? | 2024-04-03 11:00 | 2024-04-11 15:00 |  | 0d |  |  | 152h | 5,732 |
| 48 | 1.6.4.1 | 省管理部门基础信息管理模块需求确认 | 0.5d? | 2024-04-03 11:00 | 2024-04-03 16:00 | 80 | 0d |  | 测试工程师1; 测试工程师2; 后端开发工程师1; 后端开发工程师2; 前端开发工程师1; 前端开发工程师2; 架构设计师; 项目经理; 需求分析师 | 36h | 1,412 |
| 49 | 1.6.4.2 | 省管理部门基础信息管理模块文档设计 | 0.5d? | 2024-04-03 16:00 | 2024-04-04 11:00 | 48 | 0d |  | 后端开发工程师1; 后端开发工程师2; 前端开发工程师1; 前端开发工程师2; 运维工程师 | 20h | 740 |
| 50 | 1.6.4.3 | 省管理部门基础信息管理模块代码设计 | 2d? | 2024-04-04 11:00 | 2024-04-08 11:00 | 49 | 0d |  | 前端开发工程师1; 前端开发工程师2; 后端开发工程师1; 后端开发工程师2 | 64h | 2,480 |
| 51 | 1.6.4.4 | 省管理部门基础信息管理模块代码复核 | 0.5d? | 2024-04-10 15:00 | 2024-04-11 10:00 | 90 | 0d |  | 后端开发工程师1; 后端开发工程师2; 前端开发工程师1; 前端开发工程师2; 运维工程师 | 20h | 740 |
| 52 | 1.6.4.5 | 省管理部门基础信息管理模块单元测试 | 0.5d? | 2024-04-11 10:00 | 2024-04-11 15:00 | 51 | 0d |  | 测试工程师1; 测试工程师2; 运维工程师 | 12h | 360 |

| ID | WBS | Task | Duration | Start | Finish | Predecessors | Total slack | Constraint | Resources | Work | Cost |
| --- | --- | --- | --- | --- | --- | --- | --- | --- | --- | --- | --- |
| 53 | 1.6.5 | **数据汇总和分析模块** | 6.5d? | 2024-04-11 15:00 | 2024-04-22 10:00 |  | 0d |  |  | 229.5h | 8,687 |
| 54 | 1.6.5.1 | 数据汇总和分析模块确认需求 | 0.5d? | 2024-04-11 15:00 | 2024-04-12 10:00 | 52 | 0d |  | 测试工程师1; 测试工程师2; 后端开发工程师1; 后端开发工程师2; 架构设计师; 前端开发工程师1; 前端开发工程师2; 项目经理; 需求分析师 | 33.5h | 1,337 |
| 55 | 1.6.5.2 | 数据汇总和分析模块文档设计 | 0.5d? | 2024-04-12 10:00 | 2024-04-12 15:00 | 54 | 0d |  | 后端开发工程师1; 后端开发工程师2; 前端开发工程师1; 前端开发工程师2; 运维工程师 | 20h | 740 |
| 56 | 1.6.5.3 | 数据汇总和分析模块代码设计 | 4d? | 2024-04-12 15:00 | 2024-04-18 15:00 | 55 | 0d |  | 后端开发工程师1; 后端开发工程师2; 前端开发工程师1; 前端开发工程师2 | 128h | 4,960 |
| 57 | 1.6.5.4 | 数据汇总和分析模块代码复核 | 0.75d? | 2024-04-18 15:00 | 2024-04-19 12:00 | 56 | 0d |  | 后端开发工程师1; 后端开发工程师2; 前端开发工程师1; 前端开发工程师2; 运维工程师 | 30h | 1,110 |
| 58 | 1.6.5.5 | 数据汇总和分析模块单元测试 | 0.75d? | 2024-04-19 13:00 | 2024-04-22 10:00 | 57 | 0d |  | 测试工程师1; 测试工程师2; 运维工程师 | 18h | 540 |
| 59 | 1.7 | **测试** | 9d? | 2024-04-22 10:00 | 2024-05-03 10:00 |  | 0d |  |  | 368h | 13,032 |
| 60 | 1.7.1 | 集成测试 | 2d? | 2024-04-22 10:00 | 2024-04-24 10:00 | 58 | 0d |  | 测试工程师1; 测试工程师2; 运维工程师 | 48h | 1,440 |
| 61 | 1.7.2 | 系统测试 | 2d? | 2024-04-24 10:00 | 2024-04-26 10:00 | 60 | 0d |  | 运维工程师; 测试工程师1; 测试工程师2 | 48h | 1,440 |
| 62 | 1.7.3 | 测试总结 | 1d? | 2024-04-26 10:00 | 2024-04-29 10:00 | 61 | 0d |  | 测试工程师1; 测试工程师2; 运维工程师 | 24h | 720 |
| 63 | 1.7.4 | 缺陷跟踪 | 3d? | 2024-04-29 10:00 | 2024-05-02 10:00 | 62 | 0d |  | 测试工程师1; 测试工程师2; 运维工程师 | 72h | 2,160 |
| 64 | 1.7.5 | 缺陷修复 | 3d? | 2024-04-29 10:00 | 2024-05-02 10:00 | 63FF | 0d |  | 后端开发工程师1; 后端开发工程师2; 前端开发工程师1; 前端开发工程师2; 架构设计师; 项目经理; 需求分析师 | 168h | 7,032 |
| 65 | 1.7.6 | 手册编写 | 1d? | 2024-05-02 10:00 | 2024-05-03 10:00 | 64 | 2d |  | 运维工程师 | 8h | 240 |
| 66 | 1.8 | **交付** | 3d? | 2024-05-02 10:00 | 2024-05-07 10:00 |  | 0d |  |  | 160h | 6,112 |
| 67 | 1.8.1 | 验收测试 | 2d? | 2024-05-02 10:00 | 2024-05-06 10:00 | 64 | 0d |  | 项目经理; 需求分析师; 后端开发工程师1; 后端开发工程师2; 前端开发工程师1; 前端开发工程师2; 测试工程师1; 测试工程师2; 架构设计师 | 144h | 5,648 |
| 68 | 1.8.2 | 产品提交 | 0.5d? | 2024-05-06 10:00 | 2024-05-06 15:00 | 67 | 0d |  | 运维工程师; 项目经理 | 8h | 232 |
| 69 | 1.8.3 | 用户培训 | 0.5d? | 2024-05-06 15:00 | 2024-05-07 10:00 | 68 | 0d |  | 项目经理; 需求分析师 | 8h | 232 |
| 70 | 1.9 | **需求变更** | 7.75d? | 2024-04-01 08:00 | 2024-04-10 15:00 |  | 0d |  |  | 90h | 3,526 |
| 71 | 1.9.1 | **变更一** | 2.38d? | 2024-04-01 08:00 | 2024-04-03 11:00 |  | 0d |  |  | 45h | 1,763 |
| 72 | 1.9.1.1 | 需求分析 | 0.5d? | 2024-04-01 08:00 | 2024-04-01 12:00 |  | 0d | start no earlier than 2024-04-01 08:00 | 需求分析师 | 4h | 120 |
| 73 | 1.9.1.2 | 数据库设计 | 0.5d? | 2024-04-02 08:00 | 2024-04-02 12:00 | 75 | 0d |  | 项目经理; 架构设计师 | 5h | 348 |
| 74 | 1.9.1.3 | 集成测试计划 | 0.12d? | 2024-04-02 13:00 | 2024-04-02 14:00 | 73 | 0d |  | 测试工程师1; 测试工程师2 | 2h | 60 |
| 75 | 1.9.1.4 | 计划管理 | 0.5d? | 2024-04-01 13:00 | 2024-04-01 17:00 | 72 | 0d |  | 项目经理 | 4h | 112 |
| 76 | 1.9.1.5 | 变更一企业数据上报模块确认需求 | 0.12d? | 2024-04-02 14:00 | 2024-04-02 15:00 | 74 | 0d |  | 前端开发工程师1; 前端开发工程师2; 后端开发工程师1; 后端开发工程师2; 测试工程师1; 测试工程师2; 架构设计师; 项目经理; 需求分析师 | 9h | 353 |
| 77 | 1.9.1.6 | 变更一企业数据上报模块文档设计 | 0.12d? | 2024-04-02 15:00 | 2024-04-02 16:00 | 76 | 0d |  | 后端开发工程师2; 前端开发工程师1; 前端开发工程师2; 运维工程师; 后端开发工程师1 | 5h | 185 |
| 78 | 1.9.1.7 | 变更一企业数据上报模块代码设计 | 0.25d? | 2024-04-02 16:00 | 2024-04-03 09:00 | 77 | 0d |  | 后端开发工程师2; 前端开发工程师1; 前端开发工程师2; 后端开发工程师1 | 8h | 310 |
| 79 | 1.9.1.8 | 变更一企业数据上报模块代码复核 | 0.12d? | 2024-04-03 09:00 | 2024-04-03 10:00 | 78 | 0d |  | 后端开发工程师1; 后端开发工程师2; 前端开发工程师1; 前端开发工程师2; 运维工程师 | 5h | 185 |
| 80 | 1.9.1.9 | 变更一企业数据上报模块单元测试 | 0.12d? | 2024-04-03 10:00 | 2024-04-03 11:00 | 79 | 0d |  | 运维工程师; 测试工程师1; 测试工程师2 | 3h | 90 |

| ID | WBS | Task | Duration | Start | Finish | Predecessors | Total slack | Resources | Work | Cost |
| --- | --- | --- | --- | --- | --- | --- | --- | --- | --- | --- |
| 81 | 1.9.2 | **变更二** | 2.38d? | 2024-04-08 11:00 | 2024-04-10 15:00 | 50 | 0d |  | 45h | 1,763 |
| 82 | 1.9.2.1 | 需求分析 | 0.5d? | 2024-04-08 11:00 | 2024-04-08 16:00 | 50 | 0d | 需求分析师 | 4h | 120 |
| 83 | 1.9.2.2 | 数据库设计 | 0.5d? | 2024-04-09 11:00 | 2024-04-09 16:00 | 85 | 0d | 项目经理; 架构设计师 | 5h | 348 |
| 84 | 1.9.2.3 | 集成测试计划 | 0.12d? | 2024-04-09 16:00 | 2024-04-09 17:00 | 83 | 0d | 测试工程师1; 测试工程师2 | 2h | 60 |
| 85 | 1.9.2.4 | 计划管理 | 0.5d? | 2024-04-08 16:00 | 2024-04-09 11:00 | 82 | 0d | 项目经理 | 4h | 112 |
| 86 | 1.9.2.5 | 变更一企业数据上报模块确认需求 | 0.12d? | 2024-04-10 08:00 | 2024-04-10 09:00 | 84 | 0d | 前端开发工程师1; 前端开发工程师2; 后端开发工程师1; 后端开发工程师2; 测试工程师1; 测试工程师2; 架构设计师; 项目经理; 需求分析师 | 9h | 353 |
| 87 | 1.9.2.6 | 变更一企业数据上报模块文档设计 | 0.12d? | 2024-04-10 09:00 | 2024-04-10 10:00 | 86 | 0d | 后端开发工程师2; 前端开发工程师1; 前端开发工程师2; 运维工程师; 后端开发工程师1 | 5h | 185 |
| 88 | 1.9.2.7 | 变更一企业数据上报模块代码设计 | 0.25d? | 2024-04-10 10:00 | 2024-04-10 12:00 | 87 | 0d | 后端开发工程师2; 前端开发工程师1; 前端开发工程师2; 后端开发工程师1 | 8h | 310 |
| 89 | 1.9.2.8 | 变更一企业数据上报模块代码复核 | 0.12d? | 2024-04-10 13:00 | 2024-04-10 14:00 | 88 | 0d | 后端开发工程师1; 后端开发工程师2; 前端开发工程师1; 前端开发工程师2; 运维工程师 | 5h | 185 |
| 90 | 1.9.2.9 | 变更一企业数据上报模块单元测试 | 0.12d? | 2024-04-10 14:00 | 2024-04-10 15:00 | 89 | 0d | 运维工程师; 测试工程师1; 测试工程师2 | 3h | 90 |
